# NSolver(1)

Schedule from MS Project, 2015-02-16 to 2015-06-08, 7 hours a day, A marks actual dates.

## Calendars

- Standard: Mon-Fri 09:00-12:00, 14:00-18:00; Sat-Sun off.

## Resources

| Resource |
| --- |
| Matthieu |
| Tous |
| Bastien Burri |
| Matthieu, Nicolas |
| Kevin |
| Nicolas Gonin |
| Kevin, Matthieu |
| Kevin Vulliemin |
| Bastien |
| Nicolas |

## Schedule

| ID | WBS | Task | Type | Duration | Start | Finish | Predecessors | Complete | Remaining | Resources | Work | Actual work |
| --- | --- | --- | --- | --- | --- | --- | --- | --- | --- | --- | --- | --- |
| 1 | 1 | **Conduite de projet** |  | 66d | 2015-03-02 A | 2015-06-01 |  | 46% | 35.54d |  | 91h | 42h |
| 2 | 1.1 | Contrôle et suivi | manual | 1d | 2015-03-02 A | 2015-03-02 A |  | 100% |  | Nicolas | 7h | 7h |
| 3 | 1.2 | Contrôle et suivi | manual | 1d | 2015-03-09 A | 2015-03-09 A |  | 100% |  | Nicolas | 7h | 7h |
| 4 | 1.3 | Contrôle et suivi | manual | 1d | 2015-03-16 A | 2015-03-16 A |  | 100% |  | Nicolas | 7h | 7h |
| 5 | 1.4 | Contrôle et suivi | manual | 1d | 2015-03-23 A | 2015-03-23 A |  | 100% |  | Nicolas | 7h | 7h |
| 6 | 1.5 | Contrôle et suivi | manual | 1d | 2015-03-30 A | 2015-03-30 A |  | 100% |  | Nicolas | 7h | 7h |
| 7 | 1.6 | Contrôle et suivi | manual | 1d | 2015-04-13 A | 2015-04-13 A |  | 100% |  | Nicolas | 7h | 7h |
| 8 | 1.7 | Contrôle et suivi | manual | 1d | 2015-04-20 A | 2015-04-20 |  |  | 1d | Nicolas | 7h |  |
| 9 | 1.8 | Contrôle et suivi | manual | 1d | 2015-04-27 A | 2015-04-27 |  |  | 1d | Nicolas | 7h |  |
| 10 | 1.9 | Contrôle et suivi | manual | 1d | 2015-05-04 A | 2015-05-04 |  |  | 1d | Nicolas | 7h |  |
| 11 | 1.10 | Contrôle et suivi | manual | 1d | 2015-05-11 A | 2015-05-11 |  |  | 1d | Nicolas | 7h |  |
| 12 | 1.11 | Contrôle et suivi | manual | 1d | 2015-05-18 A | 2015-05-18 |  |  | 1d | Nicolas | 7h |  |
| 13 | 1.12 | Contrôle et suivi | manual | 1d | 2015-05-25 A | 2015-05-25 |  |  | 1d | Nicolas | 7h |  |
| 14 | 1.13 | Contrôle et suivi | manual | 1d | 2015-06-01 A | 2015-06-01 |  |  | 1d | Nicolas | 7h |  |
| 15 | 2 | **Phase A -- Conception** |  | 35d | 2015-02-16 A | 2015-04-03 |  | 80% | 7.13d |  | 784h | 624.75h |
| 16 | 2.1 | Sujets | manual | 1d | 2015-02-16 A | 2015-02-16 A |  | 100% |  | Tous | 7h | 7h |
| 17 | 2.2 | Cahier des charges | manual | 13d | 2015-02-17 A | 2015-03-05 A | 16 | 100% |  | Tous | 91h | 91h |
| 18 | 2.3 | **Spécifications** |  | 31d | 2015-02-20 A | 2015-04-03 |  | 76% | 7.38d |  | 686h | 526.75h |
| 19 | 2.3.1 | Introduction | manual | 4d | 2015-03-02 A | 2015-03-05 |  | 85% | 0.6d | Bastien | 28h | 23.8h |
| 20 | 2.3.2 | Planification | manual | 5d | 2015-03-02 A | 2015-03-06 A |  | 100% |  | Matthieu | 35h | 35h |
| 21 | 2.3.3 | Modèles mathématiques | manual | 15d | 2015-02-20 A | 2015-03-12 |  | 80% | 3d | Matthieu; Nicolas | 210h | 168h |
| 22 | 2.3.4 | Diagrammes des cas d'utilisation | manual | 2d | 2015-03-02 A | 2015-03-03 A |  | 100% |  | Kevin | 14h | 14h |
| 23 | 2.3.5 | Cas d'utilisation, description textuelle | manual | 4d | 2015-03-04 A | 2015-03-09 | 22 | 75% | 1d | Kevin | 28h | 21h |
| 24 | 2.3.6 | Diagrammes des séquences | manual | 4d | 2015-03-04 A | 2015-03-09 | 22 | 75% | 1d | Kevin | 28h | 21h |
| 25 | 2.3.7 | Exigences fonctionnelles et non-fonctionnelles | manual | 5d | 2015-03-06 A | 2015-03-12 |  | 75% | 1.25d | Bastien | 35h | 26.25h |
| 26 | 2.3.8 | Maquettes + diagramme navigation | manual | 20d | 2015-02-23 A | 2015-03-20 |  | 90% | 2d | Kevin | 140h | 126h |
| 27 | 2.3.9 | Diagramme de classes | manual | 5d | 2015-03-23 A | 2015-03-27 |  | 20% | 4d | Matthieu | 35h | 7h |
| 28 | 2.3.10 | Dynamique de l'application | manual | 5d | 2015-03-30 A | 2015-04-03 | 27 | 10% | 4.5d | Bastien | 35h | 3.5h |
| 29 | 2.3.11 | Architecture de déploiement | manual | 2d | 2015-03-15 A | 2015-03-16 A |  | 100% |  | Bastien | 14h | 14h |
| 30 | 2.3.12 | Choix des librairies externes | manual | 3d | 2015-03-17 A | 2015-03-19 |  | 80% | 0.6d | Bastien | 21h | 16.8h |
| 31 | 2.3.13 | Points chauds, tests fonctionnels | manual | 6d | 2015-03-16 A | 2015-03-23 |  | 80% | 1.2d | Nicolas | 42h | 33.6h |
| 32 | 2.3.14 | Conclusion | manual | 3d | 2015-03-24 A | 2015-03-26 | 31 | 80% | 0.6d | Bastien | 21h | 16.8h |

| ID | WBS | Task | Type | Duration | Start | Finish | Predecessors | Complete | Remaining | Actual start | Actual finish | Resources | Work | Actual work |
| --- | --- | --- | --- | --- | --- | --- | --- | --- | --- | --- | --- | --- | --- | --- |
| 33 | 3 | **Phase B -- Implémentation** |  | 34d | 2015-03-18 A | 2015-05-04 |  | 69% | 10.6d |  |  |  | 868h | 574h |
| 34 | 3.1 | **Codage du prototype** |  | 19d | 2015-03-18 A | 2015-04-13 A |  | 100% |  |  |  |  | 238h | 238h |
| 35 | 3.1.1 | **Partie Métier** |  | 16d | 2015-03-23 | 2015-04-13 A |  | 100% |  | 2015-03-18 |  |  | 77h | 77h |
| 36 | 3.1.1.1 | Gauss | manual | 8d | 2015-03-18 A | 2015-03-27 A |  | 100% |  |  |  | Nicolas | 56h | 56h |
| 37 | 3.1.1.2 | QR | manual | 3d | 2015-04-09 A | 2015-04-13 A |  | 100% |  |  |  | Nicolas | 21h | 21h |
| 38 | 3.1.2 | **Partie Affichage** |  | 16d | 2015-03-23 | 2015-04-13 |  | 100% |  | 2015-03-31 | 2015-04-08 |  | 154h | 154h |
| 39 | 3.1.2.1 | Frames | manual | 6d | 2015-03-31 A | 2015-04-07 A |  | 100% |  |  |  | Kevin; Matthieu | 84h | 84h |
| 40 | 3.1.2.2 | Navigation | manual | 5d | 2015-04-02 A | 2015-04-08 A |  | 100% |  |  |  | Kevin; Matthieu | 70h | 70h |
| 41 | 3.1.3 | Contrôleur MVC | manual | 1d | 2015-03-30 A | 2015-03-30 A |  | 100% |  |  |  | Kevin | 7h | 7h |
| 42 | 3.2 | **Itération I (Accent architecture)** |  | 6d | 2015-04-13 A | 2015-04-20 A | 34 | 100% |  |  |  |  | 336h | 336h |
| 43 | 3.2.1 | **Partie Métier** |  | 6d | 2015-04-13 A | 2015-04-20 A |  | 100% |  |  |  |  | 84h | 84h |
| 44 | 3.2.1.1 | Gauss | manual | 6d | 2015-04-13 A | 2015-04-20 A |  | 100% |  |  |  | Nicolas | 42h | 42h |
| 45 | 3.2.1.2 | QR | manual | 6d | 2015-04-13 A | 2015-04-20 A |  | 100% |  |  |  | Nicolas | 42h | 42h |
| 46 | 3.2.2 | **Partie Affichage** |  | 6d | 2015-04-13 A | 2015-04-20 A |  | 100% |  |  |  |  | 168h | 168h |
| 47 | 3.2.2.1 | Frames | manual | 6d | 2015-04-13 A | 2015-04-20 A |  | 100% |  |  |  | Kevin; Matthieu | 84h | 84h |
| 48 | 3.2.2.2 | Navigation | manual | 6d | 2015-04-13 A | 2015-04-20 A |  | 100% |  |  |  | Kevin; Matthieu | 84h | 84h |
| 49 | 3.2.3 | Contrôleur MVC | manual | 6d | 2015-04-13 A | 2015-04-20 A |  | 100% |  |  |  | Bastien; Kevin | 84h | 84h |
| 50 | 3.3 | **Itération II (accent codage pur)** |  | 6d | 2015-04-20 | 2015-04-27 | 42 |  |  |  |  |  | 126h |  |
| 51 | 3.3.1 | tests | manual | 6d | 2015-04-20 | 2015-04-27 |  |  |  |  |  | Matthieu | 42h |  |
| 52 | 3.3.2 | codage pur | manual | 6d | 2015-04-20 | 2015-04-27 |  |  |  |  |  | Bastien; Kevin | 84h |  |
| 53 | 3.4 | **Itération III (Tests et tunning)** |  | 6d | 2015-04-27 | 2015-05-04 | 50 |  |  |  |  |  | 168h |  |
| 54 | 3.4.1 | débogage et tests | manual | 6d | 2015-04-27 | 2015-05-04 |  |  |  |  |  | Matthieu; Nicolas | 84h |  |
| 55 | 3.4.2 | tunning | manual | 6d | 2015-04-27 | 2015-05-04 |  |  |  |  |  | Bastien; Kevin | 84h |  |
| 56 | 4 | **Phase C -- Valorisation** |  | 35d | 2015-04-13 | 2015-06-01 | 33 |  |  |  |  |  | 826h |  |
| 57 | 4.1 | Edition poster | manual | 11d | 2015-05-04 | 2015-05-18 |  |  |  |  |  | Bastien; Kevin | 154h |  |
| 58 | 4.2 | Préparation présentation + speech | manual | 16d | 2015-05-11 | 2015-06-01 |  |  |  |  |  | Kevin; Matthieu; Nicolas | 336h |  |
| 59 | 4.3 | Edition soft plug'n play | manual | 16d | 2015-05-11 | 2015-06-01 |  |  |  |  |  | Bastien; Matthieu; Nicolas | 336h |  |
| 60 | 5 | Speech + demo+ produit fini, sources et exécutable, + poster, | manual | 6d | 2015-06-01 | 2015-06-08 |  |  |  |  |  |  |  |  |
| 61 | 6 | + user guide «plug’n play» et retour client avec délivrable final | manual | 6d | 2015-06-01 | 2015-06-08 |  |  |  |  |  |  |  |  |
